How a schedule from a web Gantt chart changed from version to version. A marks actual dates.

## Version 1 (saved 2025-04-14)

| ID | Task | Duration | Start | Finish |
| --- | --- | --- | --- | --- |
| 2 | 需求收集 | 14d | 2025-04-15 | 2025-05-02 |

## Version 2 (saved 2025-04-14)

Last finish 2025-05-02 → 2025-06-27 (+56d).

Added:

| ID | Task | Duration | Start | Finish |
| --- | --- | --- | --- | --- |
| 3 | 原型设计 | 14d | 2025-04-15 | 2025-05-02 |
| 4 | 接口功能拆分设计 | 10d | 2025-04-21 | 2025-05-02 |
| 5 | 确定所需周边系统 | 5d | 2025-04-28 | 2025-05-02 |
| 6 | 安全测试 | 5d | 2025-06-16 | 2025-06-20 |
| 7 | 性能测试 | 5d | 2025-06-16 | 2025-06-20 |
| 8 | 预上线 | 5d | 2025-06-23 | 2025-06-27 |
| 9 | 功能测试 | 10d | 2025-06-09 | 2025-06-20 |

Changed:

| ID | Task | Complete |
| --- | --- | --- |
| 2 | 需求收集 | 0% → 30% |

## Version 3 (saved 2025-05-13)

Last finish stays 2025-06-27. Complete tasks 0 → 5.

Added:

| ID | Task | Duration | Start | Finish |
| --- | --- | --- | --- | --- |
| 6 | 原型界面绘制 | 8d | 2025-04-21 | 2025-04-30 |
| 7 | 后端基础架构搭建 | 8d | 2025-05-07 | 2025-05-16 |
| 8 | 后端权限校验功能接口 | 5d | 2025-05-12 | 2025-05-16 |
| 9 | 后端分页查询功能接口 | 5d | 2025-05-12 | 2025-05-16 |
| 10 | 后端机构信息查询接口 | 5d | 2025-05-19 | 2025-05-23 |
| 11 | 后端任务接收接口 | 5d | 2025-05-19 | 2025-05-23 |
| 12 | 后端任务解除接口 | 5d | 2025-05-19 | 2025-05-23 |
| 13 | 影像平台对接 | 5d | 2025-05-26 | 2025-05-30 |
| 14 | 后端任务提交接口 | 5d | 2025-05-26 | 2025-05-30 |
| 15 | 后端任务解除暂存接口 | 5d | 2025-05-26 | 2025-05-30 |
| 16 | 后端详情查看接口 | 10d | 2025-06-02 | 2025-06-13 |
| 17 | 后端任务新增、更新暂存接口 | 5d | 2025-06-02 | 2025-06-06 |
| 18 | 后端在保系统接口 | 5d | 2025-06-02 | 2025-06-06 |
| 19 | 前端报表界面绘制与权限对接 | 5d | 2025-05-12 | 2025-05-16 |
| 20 | 前端分页界面绘制与分页接口对接 | 10d | 2025-05-12 | 2025-05-23 |
| 21 | 前端任务接收、放弃接口对接 | 5d | 2025-05-19 | 2025-05-23 |
| 22 | 前端任务详情页面绘制与接口对接 | 15d | 2025-05-26 | 2025-06-13 |
| 23 | 前端风险划分界面绘制与接口对接 | 5d | 2025-05-26 | 2025-05-30 |
| 24 | 前端任务提交界面与接口对接 | 5d | 2025-06-02 | 2025-06-06 |
| 25 | 前端影像界面与接口对接 | 5d | 2025-06-09 | 2025-06-13 |

Changed:

| ID | Task | Start | Finish | Duration | Complete |
| --- | --- | --- | --- | --- | --- |
| 2 | 需求收集 |  | 2025-05-02 → 2025-04-30 (-2d) | 14d → 12d | 30% → 100% |
| 3 | 原型设计 | 2025-04-15 → 2025-04-21 (+6d) | 2025-05-02 → 2025-04-30 (-2d) | 14d → 8d | 0% → 100% |
| 4 | 接口功能拆分设计 |  | 2025-05-02 → 2025-04-30 (-2d) | 10d → 8d | 0% → 100% |
| 5 | 确定所需周边系统 |  | 2025-05-02 → 2025-04-30 (-2d) | 5d → 3d | 0% → 100% |
| 26 | 功能测试 | 2025-06-09 → 2025-06-16 (+7d) |  | 10d → 5d |  |

## Version 4 (saved 2025-05-16)

Last finish stays 2025-06-27. Complete tasks 5 → 7.

Changed:

| ID | Task | Complete |
| --- | --- | --- |
| 7 | 后端基础架构搭建 | 70% → 100% |
| 8 | 后端权限校验功能接口 | 20% → 100% |

## Version 5 (saved 2025-05-23)

Last finish stays 2025-06-27. Complete tasks 7 → 14.

Changed:

| ID | Task | Complete |
| --- | --- | --- |
| 9 | 后端分页查询功能接口 | 20% → 100% |
| 10 | 后端机构信息查询接口 | 0% → 100% |
| 11 | 后端任务接收接口 | 0% → 100% |
| 12 | 后端任务解除接口 | 0% → 100% |
| 19 | 前端报表界面绘制与权限对接 | 0% → 100% |
| 20 | 前端分页界面绘制与分页接口对接 | 0% → 100% |
| 21 | 前端任务接收、放弃接口对接 | 0% → 100% |

## Version 6 (saved 2025-06-20)

Last finish stays 2025-06-27. Complete tasks 14 → 18.

Changed:

| ID | Task | Complete |
| --- | --- | --- |
| 13 | 影像平台对接 | 0% → 100% |
| 14 | 后端任务提交接口 | 0% → 100% |
| 15 | 后端任务解除暂存接口 | 0% → 100% |
| 16 | 后端详情查看接口 | 0% → 100% |
| 17 | 后端任务新增、更新暂存接口 | 0% → 100% |
| 19 | 前端报表界面绘制与权限对接 | 100% → 50% |
| 20 | 前端分页界面绘制与分页接口对接 | 100% → 30% |
| 22 | 前端任务详情页面绘制与接口对接 | 0% → 30% |
| 24 | 前端任务提交界面与接口对接 | 0% → 60% |
| 25 | 前端影像界面与接口对接 | 0% → 100% |

## Version 7 (saved 2025-10-20)

Last finish stays 2025-06-27. Complete tasks 18 → 28.

Changed:

| ID | Task | Complete |
| --- | --- | --- |
| 18 | 后端在保系统接口 | 0% → 100% |
| 19 | 前端报表界面绘制与权限对接 | 50% → 100% |
| 20 | 前端分页界面绘制与分页接口对接 | 30% → 100% |
| 22 | 前端任务详情页面绘制与接口对接 | 30% → 100% |
| 23 | 前端风险划分界面绘制与接口对接 | 0% → 100% |
| 24 | 前端任务提交界面与接口对接 | 60% → 100% |
| 26 | 功能测试 | 0% → 100% |
| 27 | 安全测试 | 0% → 100% |
| 28 | 性能测试 | 0% → 100% |
| 29 | 预上线 | 0% → 100% |
